# Beeblz-Social Graph for Facebook

How a schedule from MS Project changed from version to version. A marks actual dates.

## Version 1 (saved 2011-01-10)

| ID | WBS | Task | Duration | Start | Finish | Predecessors | Complete | Total float | Constraint |
| --- | --- | --- | --- | --- | --- | --- | --- | --- | --- |
| 1 | 1 | **관리** | 1d | 2011-01-15 | 2011-01-15 |  |  | 36d |  |
| 2 |  | 도메인 등록 | 1d | 2011-01-15 | 2011-01-15 |  |  | 36d | start no earlier than 2011-01-15 |
| 3 | 2 | **설계** | 11d | 2010-12-16 A | 2010-12-26 A |  | 100% |  |  |
| 4 |  | 기획 | 5d | 2010-12-16 A | 2010-12-20 A |  | 100% |  | start no earlier than 2010-12-16 |
| 5 |  | 상세설계 | 6d | 2010-12-21 A | 2010-12-26 A | 4 | 100% |  |  |
| 6 | 3 | **디자인** | 6d | 2011-02-01 | 2011-02-06 |  |  | 14d |  |
| 7 |  | 로고 | 6d | 2011-02-01 | 2011-02-06 |  |  | 14d | start no earlier than 2011-02-01 |
| 8 | 4 | **개발** | 60d | 2010-12-16 A | 2011-02-13 |  | 31% | 0d |  |
| 9 |  | Facebook Data Collector | 5d | 2010-12-16 A | 2010-12-20 A |  | 100% |  |  |
| 10 |  | Graph 모듈 | 5d | 2010-12-21 A | 2010-12-25 A | 9 | 100% |  |  |
| 11 | 4.3 | **DAO** | 31d | 2010-12-26 A | 2011-01-25 |  | 12% | 19d |  |
| 12 |  | Vertex | 2d | 2010-12-26 A | 2010-12-27 A | 10 | 100% |  |  |
| 13 |  | Edge | 2d | 2010-12-28 A | 2010-12-29 A | 12 | 100% |  |  |
| 14 |  | Closeness | 10d | 2011-01-16 | 2011-01-25 | 25SS |  | 19d |  |
| 15 |  | Friend | 10d | 2011-01-16 | 2011-01-25 | 25SS |  | 19d |  |
| 16 |  | Ranking | 10d | 2011-01-16 | 2011-01-25 | 25SS |  | 19d |  |
| 17 | 4.4 | **화면** | 36d | 2011-01-04 A | 2011-02-08 |  | 32% | 5d |  |
| 18 | 4.4.1 | **메인화면** | 6d | 2011-01-04 A | 2011-01-09 |  | 83% | 35d |  |
| 19 |  | 메인 Panel | 4d | 2011-01-04 A | 2011-01-07 A |  | 100% |  | start no earlier than 2011-01-04 |
| 20 |  | 메인 Applet | 1d | 2011-01-08 A | 2011-01-08 A | 19 | 100% |  |  |
| 21 |  | 메인 JSP | 1d | 2011-01-09 | 2011-01-09 | 20 |  | 35d |  |
| 22 |  | 메뉴 | 1d | 2011-01-09 A | 2011-01-09 A | 20 | 100% |  |  |
| 23 |  | Clustering | 3d | 2011-01-10 A | 2011-01-12 A | 22 | 100% |  |  |
| 24 |  | Social Graph(Clustering) | 3d | 2011-01-13 A | 2011-01-15 A | 23 | 100% |  |  |
| 25 |  | Ranking | 1d | 2011-01-16 | 2011-01-16 | 24 |  | 0d |  |
| 26 |  | My Friends 테이블 | 6d | 2011-01-17 | 2011-01-22 | 25 |  | 0d |  |
| 27 |  | Friends of friend 테이블 | 7d | 2011-01-23 | 2011-01-29 | 26 |  | 0d |  |
| 28 |  | Closeness Graph(Ranking) | 4d | 2011-01-30 | 2011-02-02 | 27 |  | 0d |  |
| 29 |  | Friend may know 테이블 | 3d | 2011-02-03 | 2011-02-05 | 28 |  | 0d |  |
| 30 |  | Graph Share | 3d | 2011-02-06 | 2011-02-08 | 29 |  | 0d |  |
| 31 |  | 웹 페이지 | 5d | 2011-02-09 | 2011-02-13 | 30 |  | 0d |  |
| 32 | 4.6 | **Google Web Engine** | 8d | 2011-01-08 A | 2011-01-15 |  | 44% | 28d |  |
| 33 |  | 사전 리서치 | 7d | 2011-01-08 A | 2011-01-14 |  | 50% | 28d | start no earlier than 2011-01-08 |
| 34 |  | 등록 | 1d | 2011-01-15 | 2011-01-15 | 33 |  | 28d |  |
| 35 | 4.7 | **Facebook App** | 1d | 2011-01-16 | 2011-01-16 |  |  | 28d |  |
| 36 |  | 사전 등록 및 테스트 | 1d | 2011-01-16 | 2011-01-16 | 34 |  | 28d |  |
| 37 |  | 테스트 | 5d | 2011-02-14 | 2011-02-18 | 8 |  | 0d |  |
| 38 | 6 | **출시** | 2d | 2011-02-19 | 2011-02-20 |  |  | 0d |  |
| 39 |  | Facebook App 등록 | 2d | 2011-02-19 | 2011-02-20 | 37 |  | 0d |  |

## Version 2 (saved 2011-01-16)

Last finish stays 2011-02-20. Complete tasks 11 → 14.

Changed:

| ID | Task | Start | Finish | Complete | Total float | Other |
| --- | --- | --- | --- | --- | --- | --- |
| 8 | **개발** |  |  | 31% → 37% |  |  |
| 17 | **화면** |  |  | 32% → 34% |  |  |
| 18 | **메인화면** |  |  | 83% → 92% |  |  |
| 21 | 메인 JSP(oAuth, GAE 구성) | 2011-01-09 A |  | 0% → 50% |  | was named 메인 JSP |
| 32 | **Google Web Engine** |  | 2011-01-15 A | 44% → 100% | 28d → none |  |
| 33 | 사전 리서치 |  | 2011-01-14 A | 50% → 100% | 28d → none |  |
| 34 | 등록 | 2011-01-15 A | 2011-01-15 A | 0% → 100% | 28d → none |  |
| 35 | **Facebook App** | 2011-01-16 A | 2011-01-16 A | 0% → 100% | 28d → none |  |
| 36 | 사전 등록 및 테스트 | 2011-01-16 A | 2011-01-16 A | 0% → 100% | 28d → none |  |
